# Automatic Toll Booth

Schedule from MS Project, 2007-06-15 to 2007-11-08.
DePaul Universirt

## Calendars

- Standard: Mon-Fri 08:00-12:00, 13:00-17:00; Sat-Sun off.

## Resources

| Resource |
| --- |
| Senior Software Developer 1 |
| System Architect |
| Hardware Engineer |
| Communications Engineer |
| Senior Software Architect |
| Junior Software Architect 1 |
| Architecture Documentation Specialist |
| Senior Software Designer |
| Intermediate Software Developer 2 |
| Test Engineer |
| Tester 1 |
| Junior Software Architect 2 |
| Intermediate Software Developer 1 |
| Senior Software Developer 2 |
| Tester 2 |

## Schedule

| ID | WBS | Task | Duration | Start | Finish | Total slack | Work |
| --- | --- | --- | --- | --- | --- | --- | --- |
| 1 | 1 | **Automatic Toll Booth System** | 104.5d? | 2007-06-15 | 2007-11-08 | 0d | 1560h |
| 2 | 1.1 | **Management** | 1d? | 2007-06-15 | 2007-06-15 | 82d |  |
| 3 | 1.1.1 | **Inception phase management** | 1d? | 2007-06-15 | 2007-06-15 | 82d |  |
| 4 | 1.1.1.1 | Business case development | 1d? | 2007-06-15 | 2007-06-15 | 8d |  |
| 5 | 1.1.1.2 | Elaboration phase release specifications | 1d? | 2007-06-15 | 2007-06-15 | 8d |  |
| 6 | 1.1.1.3 | Elaboration phase WBS baselining | 1d? | 2007-06-15 | 2007-06-15 | 8d |  |
| 7 | 1.1.1.4 | Software development plan | 1d? | 2007-06-15 | 2007-06-15 | 8d |  |
| 8 | 1.1.1.5 | Inception phase project control and status assessments | 1d? | 2007-06-15 | 2007-06-15 | 8d |  |
| 9 | 1.1.2 | **Elaboration phase management** | 1d? | 2007-06-15 | 2007-06-15 | 82d |  |
| 10 | 1.1.2.1 | Construction phase release specifications | 1d? | 2007-06-15 | 2007-06-15 | 8d |  |
| 11 | 1.1.2.2 | Construction phase WBS baselining | 1d? | 2007-06-15 | 2007-06-15 | 8d |  |
| 12 | 1.1.2.3 | Elaboration phase project control and status assessments | 1d? | 2007-06-15 | 2007-06-15 | 8d |  |
| 13 | 1.1.3 | **Construction phase management** | 1d? | 2007-06-15 | 2007-06-15 | 82d |  |
| 14 | 1.1.3.1 | Deployment phase planning | 1d? | 2007-06-15 | 2007-06-15 | 8d |  |
| 15 | 1.1.3.2 | Deployment phase WBS baselining | 1d? | 2007-06-15 | 2007-06-15 | 8d |  |
| 16 | 1.1.3.3 | Construction phase project control and status assessments | 1d? | 2007-06-15 | 2007-06-15 | 8d |  |
| 17 | 1.1.4 | **Transition phase management** | 1d? | 2007-06-15 | 2007-06-15 | 82d |  |
| 18 | 1.1.4.1 | Next generation planning | 1d? | 2007-06-15 | 2007-06-15 | 8d |  |
| 19 | 1.1.4.2 | Transition phase project control and status assessments | 1d? | 2007-06-15 | 2007-06-15 | 8d |  |
| 20 | 1.2 | **Environment** | 1d? | 2007-06-15 | 2007-06-15 | 82d |  |
| 21 | 1.2.1 | Inception phase environment specification | 1d? | 2007-06-15 | 2007-06-15 | 8d |  |
| 22 | 1.2.2 | **Elaboration phase environment baselining** | 1d? | 2007-06-15 | 2007-06-15 | 82d |  |
| 23 | 1.2.2.1 | Development environment installation and administration | 1d? | 2007-06-15 | 2007-06-15 | 8d |  |
| 24 | 1.2.2.2 | Development environment integration and custom toolsmithing | 1d? | 2007-06-15 | 2007-06-15 | 8d |  |
| 25 | 1.2.2.3 | Software change order (SCO) database formulation | 1d? | 2007-06-15 | 2007-06-15 | 8d |  |

| ID | WBS | Task | Duration | Start | Finish | Predecessors | Total slack | Resources | Work |
| --- | --- | --- | --- | --- | --- | --- | --- | --- | --- |
| 26 | 1.2.3 | **Construction phase environment environment maintenance** | 1d? | 2007-06-15 | 2007-06-15 |  | 82d |  |  |
| 27 | 1.2.3.1 | Development environment maintenance and administration | 1d? | 2007-06-15 | 2007-06-15 |  | 8d |  |  |
| 28 | 1.2.3.2 | SCO database maintenance | 1d? | 2007-06-15 | 2007-06-15 |  | 8d |  |  |
| 29 | 1.2.4 | **Transition phase environment maintenance** | 1d? | 2007-06-15 | 2007-06-15 |  | 82d |  |  |
| 30 | 1.2.4.1 | Development environment maintenance and administration | 1d? | 2007-06-15 | 2007-06-15 |  | 8d |  |  |
| 31 | 1.2.4.2 | SCO database maintenance | 1d? | 2007-06-15 | 2007-06-15 |  | 8d |  |  |
| 32 | 1.2.4.3 | Maintenance environment packaging and transition | 1d? | 2007-06-15 | 2007-06-15 |  | 8d |  |  |
| 33 | 1.3 | **Requirements** | 1d? | 2007-06-15 | 2007-06-15 |  | 82d |  |  |
| 34 | 1.3.1 | **Inception phase requirements** | 1d? | 2007-06-15 | 2007-06-15 |  | 82d |  |  |
| 35 | 1.3.1.1 | Vision specification | 1d? | 2007-06-15 | 2007-06-15 |  | 8d |  |  |
| 36 | 1.3.1.2 | Use case modeling | 1d? | 2007-06-15 | 2007-06-15 |  | 8d |  |  |
| 37 | 1.3.2 | **Elaboration phase requirements** | 1d? | 2007-06-15 | 2007-06-15 |  | 82d |  |  |
| 38 | 1.3.2.1 | Vision baselining | 1d? | 2007-06-15 | 2007-06-15 |  | 8d |  |  |
| 39 | 1.3.2.2 | Use case model baselining | 1d? | 2007-06-15 | 2007-06-15 |  | 8d |  |  |
| 40 | 1.3.3 | Construction phase requirements maintenance | 1d? | 2007-06-15 | 2007-06-15 |  | 8d |  |  |
| 41 | 1.3.4 | Transition phase requirements maintenance | 1d? | 2007-06-15 | 2007-06-15 |  | 8d |  |  |
| 42 | 1.4 | **Design** | 90d? | 2007-06-15 | 2007-10-18 |  | 0d |  | 1040h |
| 43 | 1.4.1 | Inception phase architecture prototyping | 10d? | 2007-06-15 | 2007-06-28 |  | 0d | System Architect [50%]; Senior Software Architect [50%]; Senior Software Developer 1 | 160h |
| 44 | 1.4.2 | **Elaboration phase architecture baselining** | 80d? | 2007-06-29 | 2007-10-18 |  | 0d |  | 880h |
| 45 | 1.4.2.1 | **System architecture definition** | 20d? | 2007-06-29 | 2007-07-26 |  | 0d |  | 200h |
| 46 | 1.4.2.1.1 | Define high-level hardware architecture | 10d? | 2007-06-29 | 2007-07-12 | 43 | 0d | System Architect | 80h |
| 47 | 1.4.2.1.2 | Define high-level communications architecture | 15d? | 2007-07-06 | 2007-07-26 | 43, 46FS-5d | 0d | Communications Engineer | 120h |
| 48 | 1.4.2.2 | **Architecture design modeling** | 40d? | 2007-07-27 | 2007-09-20 |  | 0d |  | 480h |
| 49 | 1.4.2.2.1 | Perform ABD (architecture-based design) | 10d? | 2007-07-27 | 2007-08-09 | 45 | 0d | Senior Software Architect [50%]; Junior Software Architect 1 | 120h |
| 50 | 1.4.2.2.2 | Perform quality attribute analysis (ATAM) | 8d? | 2007-08-10 | 2007-08-21 | 49 | 0d | Senior Software Architect; Junior Software Architect 1; Junior Software Architect 2 | 160h |
| 51 | 1.4.2.2.3 | Perform cost/benefit analysis (CBAM) | 7d? | 2007-08-22 | 2007-08-30 | 50 | 0d | Senior Software Architect; Junior Software Architect 1 | 80h |
| 52 | 1.4.2.2.4 | Document software architecture | 15d? | 2007-08-31 | 2007-09-20 | 51 | 0d | Architecture Documentation Specialist | 120h |

Notes:
- 47: This task has a Start-to-Start relationship with predecessor. Realistically, some of the high-level hardware architecture must be defined before beginning work on the communications architecture. I introduced a lag of 5 days to allow some hardware defintion to be in place.

| ID | WBS | Task | Duration | Start | Finish | Predecessors | Total slack | Free slack | Resources | Work |
| --- | --- | --- | --- | --- | --- | --- | --- | --- | --- | --- |
| 53 | 1.4.2.3 | **Design demonstration planning and conduct** | 20d? | 2007-09-21 | 2007-10-18 |  | 0d |  |  | 200h |
| 54 | 1.4.2.3.1 | Select architectural baseline critical use-cases | 2.5d? | 2007-09-21 | 2007-09-25 | 48 | 0d |  | Senior Software Architect; Senior Software Designer | 40h |
| 55 | 1.4.2.3.2 | Select architectural baseline critical functionality | 2.5d? | 2007-09-25 | 2007-09-27 | 54 | 0d |  | Senior Software Designer; Senior Software Developer 1 | 40h |
| 56 | 1.4.2.3.3 | Design architectural baseline components | 15d? | 2007-09-28 | 2007-10-18 | 55 | 0d |  | Senior Software Designer [50%]; Junior Software Architect 2 | 120h |
| 57 | 1.4.3 | **Construction phase design modeling** | 1d? | 2007-06-15 | 2007-06-15 |  | 103.5d |  |  |  |
| 58 | 1.4.3.1 | Architecture design model maintenance | 1d? | 2007-06-15 | 2007-06-15 |  | 103.5d |  |  |  |
| 59 | 1.4.3.2 | Component design modeling | 1d? | 2007-06-15 | 2007-06-15 |  | 103.5d |  |  |  |
| 60 | 1.4.4 | Transition phase architecture design maintenance | 1d? | 2007-06-15 | 2007-06-15 |  | 8d |  |  |  |
| 61 | 1.5 | **Implementation** | 100d? | 2007-06-15 | 2007-11-01 |  | 4.5d |  |  | 320h |
| 62 | 1.5.1 | Inception phase component prototyping | 10d? | 2007-06-15 | 2007-06-28 |  | 71d | 70d | Senior Software Designer [50%]; Senior Software Developer 2 | 120h |
| 63 | 1.5.2 | **Elaboration phase component implementation** | 10d? | 2007-10-19 | 2007-11-01 |  | 0d |  |  | 200h |
| 64 | 1.5.2.1 | **Critical component coding demonstration integration (architectural baseline)** | 10d? | 2007-10-19 | 2007-11-01 |  | 0d |  |  | 200h |
| 65 | 1.5.2.1.1 | Implement architectural baseline components | 10d? | 2007-10-19 | 2007-11-01 | 56, 62 | 0d |  | Senior Software Developer 1 [50%]; Intermediate Software Developer 1; Intermediate Software Developer 2 | 160h |
| 66 | 1.5.2.1.2 | Integrate architectural baseline components | 5d? | 2007-10-26 | 2007-11-01 | 65FF | 0d |  | Intermediate Software Developer 2 | 40h |
| 67 | 1.5.3 | **Construction phase implementation** | 1d? | 2007-06-15 | 2007-06-15 |  | 103.5d |  |  |  |
| 68 | 1.5.3.1 | Initial release(s) component coding and unit/integration testing | 1d? | 2007-06-15 | 2007-06-15 |  | 103.5d |  |  |  |
| 69 | 1.5.3.2 | Alpha release component and unit/integration testing | 1d? | 2007-06-15 | 2007-06-15 |  | 103.5d |  |  |  |
| 70 | 1.5.3.3 | Beta release component and unit/integration testing | 1d? | 2007-06-15 | 2007-06-15 |  | 103.5d |  |  |  |
| 71 | 1.5.3.4 | Component maintenance | 1d? | 2007-06-15 | 2007-06-15 |  | 103.5d |  |  |  |
| 72 | 1.5.4 | Transition phase component maintenance | 1d? | 2007-06-15 | 2007-06-15 |  | 8d |  |  |  |
| 73 | 1.6 | **Assessment** | 104.5d? | 2007-06-15 | 2007-11-08 |  | 0d |  |  | 200h |
| 74 | 1.6.1 | Inception phase assessment planning | 5d? | 2007-06-15 | 2007-06-21 |  | 90d |  | Test Engineer; Tester 1 | 80h |
| 75 | 1.6.2 | **Elaboration phase assessment** | 14.5d? | 2007-10-19 | 2007-11-08 |  | 0d |  |  | 120h |
| 76 | 1.6.2.1 | Select and define architectural baseline tests | 5d? | 2007-10-19 | 2007-10-25 | 53 | 5d |  | Senior Software Designer; Test Engineer | 48h |
| 77 | 1.6.2.2 | Implement architecture test scenario | 2.5d? | 2007-11-02 | 2007-11-06 | 76, 66 | 0d |  | Test Engineer; Tester 2 | 40h |
| 78 | 1.6.2.3 | Test architectural baseline | 2d? | 2007-11-06 | 2007-11-08 | 77 | 0d |  | Test Engineer [50%]; Tester 1 [50%]; Tester 2 | 32h |

Notes:
- 66: This task has a Finish-to-Finish relationship with its predecessor. This is consistent with the SE practice of continuous integration, in which integration is carried out concurrently with implementation.

| ID | WBS | Task | Duration | Start | Finish | Total slack |
| --- | --- | --- | --- | --- | --- | --- |
| 79 | 1.6.3 | **Construction phase assessment** | 1d? | 2007-06-15 | 2007-06-15 | 103.5d |
| 80 | 1.6.3.1 | Initial release assessment and release description | 1d? | 2007-06-15 | 2007-06-15 | 103.5d |
| 81 | 1.6.3.2 | Alpha release assessment and release description | 1d? | 2007-06-15 | 2007-06-15 | 103.5d |
| 82 | 1.6.3.3 | Beta release assessment and release description | 1d? | 2007-06-15 | 2007-06-15 | 103.5d |
| 83 | 1.6.4 | **Transition phase assessment** | 1d? | 2007-06-15 | 2007-06-15 | 103.5d |
| 84 | 1.6.4.1 | Product release assessment and release descriptions | 1d? | 2007-06-15 | 2007-06-15 | 103.5d |
| 85 | 1.7 | **Deployment** | 1d? | 2007-06-15 | 2007-06-15 | 82d |
| 86 | 1.7.1 | Inception phase deployment planning | 1d? | 2007-06-15 | 2007-06-15 | 8d |
| 87 | 1.7.2 | Elaboration phase deployment planning | 1d? | 2007-06-15 | 2007-06-15 | 8d |
| 88 | 1.7.3 | **Construction phase deployment** | 1d? | 2007-06-15 | 2007-06-15 | 82d |
| 89 | 1.7.3.1 | User manual baselining | 1d? | 2007-06-15 | 2007-06-15 | 8d |
| 90 | 1.7.4 | **Transition phase deployment** | 1d? | 2007-06-15 | 2007-06-15 | 82d |
| 91 | 1.7.4.1 | Product transition to customer | 1d? | 2007-06-15 | 2007-06-15 | 8d |
